# Cronograma Proyecto

Schedule from MS Project, 2018-08-16 to 2018-11-20, A marks actual dates.

## Calendars

- CalendarioCochachin: Mon 22:00-23:00; Tue-Fri 00:00-02:00; Sat 20:00-23:00; Sun 10:00-18:00.

## Resources

| Resource |
| --- |
| Frank Cochachin |
| Susana Gonzales |

## Schedule

| ID | WBS | Task | Duration | Start | Finish | Predecessors | Complete | Remaining | Total slack | Free slack |
| --- | --- | --- | --- | --- | --- | --- | --- | --- | --- | --- |
| 1 | 1 | **Gestor de Incidencias** | 34.75d | 2018-08-16 00:00 A | 2018-11-20 19:00 |  | 13% | 30.29d | 0d |  |
| 2 | 1.1 | **Procesos de Gestion** | 8.28d | 2018-08-16 00:00 A | 2018-09-08 22:12 |  | 20% | 6.61d | 26.48d |  |
| 3 | 1.1.1 | **Inicio** | 8.28d | 2018-08-16 00:00 A | 2018-09-08 22:12 |  | 26% | 6.14d | 26.48d |  |
| 4 | 1.1.1.1 | Revision de metodologia de trabajo | 2h | 2018-08-16 00:00 A | 2018-08-16 02:00 |  | 50% | 1h | 0.12d | 0d |
| 5 | 1.1.1.2 | **Plan del Proyecto** | 7.25d | 2018-08-16 00:00 A | 2018-09-04 02:00 |  | 33% | 4.83d | 27.5d |  |
| 6 | 1.1.1.2.1 | **Elaboración de Plan del Proyecto** | 5.88d | 2018-08-16 01:00 A | 2018-09-02 11:00 |  | 51% | 2.89d | 27.5d |  |
| 7 | 1.1.1.2.1.1 | Elaboración EDT, definición de entregables | 4h | 2018-08-16 01:00 A | 2018-08-18 21:00 | 4 | 50% | 2h | 1.75d | 0d |
| 8 | 1.1.1.2.1.2 | Elaboración de cronograma detallado | 2h | 2018-08-18 21:00 | 2018-08-18 23:00 | 7 |  |  | 1.75d | 0d |
| 9 | 1.1.1.2.1.3 | Elaboración de Plan de Proyecto | 19h | 2018-08-17 01:00 A | 2018-08-23 02:00 | 8 | 95% | 1h | 0d |  |
| 10 | 1.1.1.2.1.4 | Definición de Organización del Proyecto | 8h | 2018-08-19 16:00 A | 2018-08-25 22:00 | 9 | 50% | 4h | 0d |  |
| 11 | 1.1.1.2.1.5 | Elaborar plan de seguimiento de proveedor | 1h | 2018-08-25 22:00 | 2018-08-25 23:00 | 10 |  |  | 0d |  |
| 12 | 1.1.1.2.1.6 | Elaboracion de Registro de Riesgos | 12h | 2018-08-19 11:12 A | 2018-08-26 16:00 | 11 | 50% | 6h | 0d |  |
| 13 | 1.1.1.2.1.7 | Elaboracion de Proceso de Gestion de Proyectos | 4h | 2018-08-19 17:12 A | 2018-08-26 18:00 | 12 | 50% | 2h | 47.75d | 0d |
| 14 | 1.1.1.2.1.8 | Elaboracion de Flujo Presupuestal | 8h | 2018-08-27 22:00 | 2018-08-31 01:00 | 13 |  |  | 29d | 0d |
| 15 | 1.1.1.2.1.9 | Elaboracion de actas de reunion | 2h | 2018-08-31 01:00 | 2018-09-01 21:00 | 14 |  |  | 29d | 0d |
| 16 | 1.1.1.2.1.10 | Elaboracion formato de aceptacion de entregables | 3h | 2018-09-01 21:00 | 2018-09-02 11:00 | 15 |  |  | 29d |  |
| 17 | 1.1.1.2.2 | **Requerimientos** | 1.25d | 2018-09-02 11:00 | 2018-09-04 02:00 |  |  |  | 27.5d |  |
| 18 | 1.1.1.2.2.1 | Elaborar lista maestra de requerimientos | 2h | 2018-09-02 11:00 | 2018-09-02 13:00 | 16 |  |  | 47.75d | 0d |
| 19 | 1.1.1.2.2.2 | Elaborar matriz de trazabilidad de requerimientos | 2h | 2018-09-02 13:00 | 2018-09-02 15:00 | 18 |  |  | 47.75d | 0d |
| 20 | 1.1.1.2.2.3 | Elaborar Proceso de gestion de requerimientos | 4h | 2018-09-02 15:00 | 2018-09-03 23:00 | 19 |  |  | 47.75d | 0d |
| 21 | 1.1.1.2.2.4 | Elaborar formato registro de cambios de requerimiento | 1h | 2018-09-04 00:00 | 2018-09-04 01:00 | 20 |  |  | 47.75d | 0d |
| 22 | 1.1.1.2.2.5 | Elaborar formato de solicitud de cambios de requerimientos | 1h | 2018-09-04 01:00 | 2018-09-04 02:00 | 21 |  |  | 47.75d |  |
| 23 | 1.1.1.2.3 | **Aseguramiento de Calidad** | 1d | 2018-08-16 00:00 | 2018-08-19 11:00 |  |  |  | 33.75d |  |
| 24 | 1.1.1.2.3.1 | Preparar las actividades de QA | 5h | 2018-08-16 00:00 | 2018-08-18 21:00 |  |  |  | 34.38d |  |
| 25 | 1.1.1.2.3.2 | Ejecutar la Revisión de QA - Procesos | 8h | 2018-08-16 00:00 | 2018-08-19 11:00 |  |  |  | 34d |  |
| 26 | 1.1.1.2.3.3 | Levantar la No Conformidad | 4h | 2018-08-16 00:00 | 2018-08-17 02:00 |  |  |  | 34.5d |  |
| 27 | 1.1.1.2.3.4 | Realizar el seguimiento | 2h | 2018-08-16 00:00 | 2018-08-16 02:00 |  |  |  | 34.75d |  |
| 28 | 1.1.1.2.3.5 | Elaborar e Informar las actividades de QA a Lider de Proyecto | 4h | 2018-08-16 00:00 | 2018-08-17 02:00 |  |  |  | 34.5d |  |

| ID | WBS | Task | Type | Duration | Start | Finish | Predecessors | Total slack | Free slack |
| --- | --- | --- | --- | --- | --- | --- | --- | --- | --- |
| 29 | 1.1.1.3 | **Kick Off Interno** |  | 7.65d | 2018-08-16 00:00 | 2018-09-06 01:12 |  | 7.15d |  |
| 30 | 1.1.1.3.1 | **Primera reunion** |  | 0.75d | 2018-08-16 00:00 | 2018-08-18 22:00 |  | 29d |  |
| 31 | 1.1.1.3.1.1 | Elaboración de presentación |  | 4h | 2018-08-16 00:00 | 2018-08-17 02:00 |  | 49.25d | 0d |
| 32 | 1.1.1.3.1.2 | Kick Off Meeting Interno |  | 1h | 2018-08-18 20:00 | 2018-08-18 21:00 | 31 | 49.25d | 0d |
| 33 | 1.1.1.3.1.3 | Acta de reunión con acuerdos tomados |  | 1h | 2018-08-18 21:00 | 2018-08-18 22:00 | 32 | 49.25d | 0d |
| 34 | 1.1.1.3.2 | **Segunda reunion** |  | 0.5d | 2018-09-04 01:12 | 2018-09-06 01:12 |  | 0d |  |
| 35 | 1.1.1.3.2.1 | Elaboración de presentación | manual | 4h | 2018-09-04 01:12 | 2018-09-06 01:12 |  |  |  |
| 36 | 1.1.1.3.2.2 | Kick Off Meeting Interno | manual | 1h | 2018-09-04 01:12 | 2018-09-05 00:12 |  |  |  |
| 37 | 1.1.1.3.2.3 | Acta de reunión con acuerdos tomados | manual | 1h | 2018-09-04 01:12 | 2018-09-05 00:12 |  |  |  |
| 38 | 1.1.1.3.3 | **Tercera reunion** |  | 0.5d | 2018-09-04 01:12 | 2018-09-06 01:12 |  | 0d |  |
| 39 | 1.1.1.3.3.1 | Elaboración de presentación | manual | 4h | 2018-09-04 01:12 | 2018-09-06 01:12 |  |  |  |
| 40 | 1.1.1.3.3.2 | Kick Off Meeting Interno | manual | 1h | 2018-09-04 01:12 | 2018-09-05 00:12 |  |  |  |
| 41 | 1.1.1.3.3.3 | Acta de reunión con acuerdos tomados | manual | 1h | 2018-09-04 01:12 | 2018-09-05 00:12 |  |  |  |
| 42 | 1.1.1.4 | **Kick Off con Cliente** |  | 7.53d | 2018-08-18 22:00 | 2018-09-08 22:12 |  | 7.15d |  |
| 43 | 1.1.1.4.1 | **Primera reunion** |  | 0.5d | 2018-08-18 22:00 | 2018-08-19 13:00 |  | 29d |  |
| 44 | 1.1.1.4.1.1 | Kick Off Meeting con Cliente |  | 3h | 2018-08-18 22:00 | 2018-08-19 12:00 | 33 | 49.25d | 0d |
| 45 | 1.1.1.4.1.2 | Acta de reunión con acuerdos tomados |  | 1h | 2018-08-19 12:00 | 2018-08-19 13:00 | 44 | 49.25d | 0d |
| 46 | 1.1.1.4.2 | **Segunda reunion** |  | 0.38d | 2018-09-07 01:12 | 2018-09-08 22:12 |  | 0d |  |
| 47 | 1.1.1.4.2.1 | Kick Off Meeting con Cliente | manual | 3h | 2018-09-07 01:12 | 2018-09-08 22:12 |  |  |  |
| 48 | 1.1.1.4.2.2 | Acta de reunión con acuerdos tomados | manual | 1h | 2018-09-07 01:12 | 2018-09-08 20:12 |  |  |  |
| 49 | 1.1.1.4.3 | **Tercera reunion** |  | 0.38d | 2018-09-07 01:12 | 2018-09-08 22:12 |  | 0d |  |
| 50 | 1.1.1.4.3.1 | Kick Off Meeting con Cliente | manual | 3h | 2018-09-07 01:12 | 2018-09-08 22:12 |  |  |  |
| 51 | 1.1.1.4.3.2 | Acta de reunión con acuerdos tomados | manual | 1h | 2018-09-07 01:12 | 2018-09-08 20:12 |  |  |  |
| 52 | 1.1.2 | **Asignación, Ejecución, Seguimiento y Control** |  | 4.5d | 2018-08-19 13:00 | 2018-09-01 22:00 |  | 29d |  |
| 53 | 1.1.2.1 | **Aseguramiento de Calidad** |  | 2.5d | 2018-08-19 13:00 | 2018-08-26 13:00 |  | 29d |  |
| 54 | 1.1.2.1.1 | Preparar las actividades de QA |  | 5h | 2018-08-19 13:00 | 2018-08-19 18:00 | 45 | 49.25d | 0d |
| 55 | 1.1.2.1.2 | Ejecutar la Revisión de QA - Procesos |  | 5h | 2018-08-20 22:00 | 2018-08-22 02:00 | 54 | 49.25d | 0d |
| 56 | 1.1.2.1.3 | Establecer formatos y documentos |  | 5h | 2018-08-23 00:00 | 2018-08-25 21:00 | 55 | 49.25d | 0d |
| 57 | 1.1.2.1.4 | Elaborar e Informar las actividades de QA |  | 5h | 2018-08-25 21:00 | 2018-08-26 13:00 | 56 | 49.25d | 0d |

| ID | WBS | Task | Duration | Start | Finish | Predecessors | Total slack | Free slack |
| --- | --- | --- | --- | --- | --- | --- | --- | --- |
| 58 | 1.1.2.2 | **Planeamiento, asignación y control semanal** | 2d | 2018-08-26 13:00 | 2018-09-01 22:00 |  | 29d |  |
| 59 | 1.1.2.2.1 | Preparar Comité Interno de Proyecto | 4h | 2018-08-26 13:00 | 2018-08-26 17:00 | 57 | 49.25d | 0d |
| 60 | 1.1.2.2.2 | Generar métricas | 2h | 2018-08-26 17:00 | 2018-08-27 23:00 | 59 | 49.25d | 0d |
| 61 | 1.1.2.2.3 | Elaborar informe de estado de proyecto | 4h | 2018-08-28 00:00 | 2018-08-29 02:00 | 60 | 49.25d | 0d |
| 62 | 1.1.2.2.4 | Comité interno de Proyecto Interno | 1h | 2018-08-30 00:00 | 2018-08-30 01:00 | 61 | 49.25d | 0d |
| 63 | 1.1.2.2.5 | Asignación de trabajo | 2h | 2018-08-30 01:00 | 2018-08-31 01:00 | 62 | 49.25d | 0d |
| 64 | 1.1.2.2.6 | Consolidación de métricas | 2h | 2018-08-31 01:00 | 2018-09-01 21:00 | 63 | 49.25d | 0d |
| 65 | 1.1.2.2.7 | Ejecutar la Revisión de procesos | 1h | 2018-09-01 21:00 | 2018-09-01 22:00 | 64 | 49.25d |  |
| 66 | 1.2 | **Procesos de Ingeniería** | 15.25d | 2018-10-20 09:00 | 2018-11-20 19:00 |  |  |  |
| 67 | 1.2.1 | **Analisis** | 0.38d | 2018-10-20 20:00 | 2018-10-20 23:00 |  | 0.12d |  |
| 68 | 1.2.1.1 | **Elaborar historias de usuario** | 0.38d | 2018-10-20 20:00 | 2018-10-20 23:00 |  | 0.12d |  |
| 69 | 1.2.1.1.1 | Vista Incidencia - desde el enfoque tecnico | 1h | 2018-10-20 20:00 | 2018-10-20 21:00 |  | 0.12d | 0d |
| 70 | 1.2.1.1.2 | Vista Incidencia - desde el enfoque cliente | 1h | 2018-10-20 21:00 | 2018-10-20 22:00 | 69 | 0.12d | 0d |
| 71 | 1.2.1.1.3 | Vista FAQ | 1h | 2018-10-20 22:00 | 2018-10-20 23:00 | 70 | 0.12d | 0d |
| 72 | 1.2.2 | **Diseño** | 2.88d | 2018-10-21 10:00 | 2018-10-28 13:00 |  | 0.12d |  |
| 73 | 1.2.2.1 | **Analisis y creacion de la base de datos en SQL Server** | 0.62d | 2018-10-21 10:00 | 2018-10-21 15:00 |  | 0.12d |  |
| 74 | 1.2.2.1.1 | Creacion de Esquemas | 1h | 2018-10-21 10:00 | 2018-10-21 11:00 | 71 | 0.12d | 0d |
| 75 | 1.2.2.1.2 | Creacion de Tablas | 1h | 2018-10-21 11:00 | 2018-10-21 12:00 | 74 | 0.12d | 0d |
| 76 | 1.2.2.1.3 | Creacion de Relaciones | 1h | 2018-10-21 12:00 | 2018-10-21 13:00 | 75 | 0.12d | 0d |
| 77 | 1.2.2.1.4 | Normalizacion | 2h | 2018-10-21 13:00 | 2018-10-21 15:00 | 76 | 0.12d | 0d |
| 78 | 1.2.2.2 | **Preparacion de Prototipos** | 0.75d | 2018-10-21 15:00 | 2018-10-23 02:00 |  | 0.12d |  |
| 79 | 1.2.2.2.1 | Vista Incidencia - desde el enfoque tecnico | 2h | 2018-10-21 15:00 | 2018-10-21 17:00 | 77 | 0.12d | 0d |
| 80 | 1.2.2.2.2 | Vista Incidencia - desde el enfoque cliente | 2h | 2018-10-21 17:00 | 2018-10-22 23:00 | 79 | 0.12d | 0d |
| 81 | 1.2.2.2.3 | Vista FAQ | 2h | 2018-10-23 00:00 | 2018-10-23 02:00 | 80 | 0.12d | 0d |

| ID | WBS | Task | Duration | Start | Finish | Predecessors | Total slack | Free slack |
| --- | --- | --- | --- | --- | --- | --- | --- | --- |
| 82 | 1.2.2.3 | **Aseguramiento de calidad** | 1.12d | 2018-10-24 00:00 | 2018-10-27 23:00 |  | 0.12d |  |
| 83 | 1.2.2.3.1 | Preparar las actividades de QA. | 2h | 2018-10-24 00:00 | 2018-10-24 02:00 | 81 | 0.12d | 0d |
| 84 | 1.2.2.3.2 | Ejecutar la Revisión de QA | 2h | 2018-10-25 00:00 | 2018-10-25 02:00 | 83 | 0.12d | 0d |
| 85 | 1.2.2.3.3 | Ejecutar la Revisión de procesos | 2h | 2018-10-26 00:00 | 2018-10-26 02:00 | 84 | 0.12d | 0d |
| 86 | 1.2.2.3.4 | Levantar la No Conformidad | 1h | 2018-10-27 20:00 | 2018-10-27 21:00 | 85 | 0.12d | 0d |
| 87 | 1.2.2.3.5 | Realizar el seguimiento | 1h | 2018-10-27 21:00 | 2018-10-27 22:00 | 86 | 0.12d | 0d |
| 88 | 1.2.2.3.6 | Elaborar e Informar las actividades de QA a la Gerencia del Servicio | 1h | 2018-10-27 22:00 | 2018-10-27 23:00 | 87 | 0.12d | 0d |
| 89 | 1.2.2.4 | **Validación del cliente** | 0.25d | 2018-10-28 10:00 | 2018-10-28 12:00 |  | 0.12d |  |
| 90 | 1.2.2.4.1 | Revisión de estrategía de comunicación y formación | 1h | 2018-10-28 10:00 | 2018-10-28 11:00 | 88 | 0.12d | 0d |
| 91 | 1.2.2.4.2 | Adecuación de cambios | 1h | 2018-10-28 11:00 | 2018-10-28 12:00 | 90 | 0.12d | 0d |
| 92 | 1.2.2.5 | **Gestión de la configuración** | 0.12d | 2018-10-28 12:00 | 2018-10-28 13:00 |  | 0.12d |  |
| 93 | 1.2.2.5.1 | Realizar Control de Cambios | 1h | 2018-10-28 12:00 | 2018-10-28 13:00 | 91 | 0.12d | 0d |
| 94 | 1.2.3 | **Desarrollo** | 7.88d | 2018-10-28 13:00 | 2018-11-18 16:00 |  | 0.12d |  |
| 95 | 1.2.3.1 | **Iteración 1** | 6.12d | 2018-10-28 13:00 | 2018-11-14 01:00 |  | 0.12d |  |
| 96 | 1.2.3.1.1 | Planificación de Formación | 1h | 2018-10-28 13:00 | 2018-10-28 14:00 | 93 | 0.12d | 0d |
| 97 | 1.2.3.1.2 | Codigo Fuente 1 | 6d | 2018-10-28 14:00 | 2018-11-14 01:00 | 96 | 0.12d | 0d |
| 98 | 1.2.3.2 | **Iteración 2** | 1.12d | 2018-11-14 01:00 | 2018-11-18 11:00 |  | 0.12d |  |
| 99 | 1.2.3.2.1 | Verificación de la planificación de formación y comunicación | 1h | 2018-11-14 01:00 | 2018-11-14 02:00 | 97 | 0.12d | 0d |
| 100 | 1.2.3.2.2 | Adecuación de Cambios | 4h | 2018-11-15 00:00 | 2018-11-16 02:00 | 99 | 0.12d | 0d |
| 101 | 1.2.3.2.3 | Casos de Prueba | 4h | 2018-11-17 20:00 | 2018-11-18 11:00 | 100 | 0.12d | 0d |
| 102 | 1.2.3.3 | **Iteración 3** | 0.62d | 2018-11-18 11:00 | 2018-11-18 16:00 |  | 0.12d |  |
| 103 | 1.2.3.3.1 | Solución en ambiente de Pruebas | 2h | 2018-11-18 11:00 | 2018-11-18 13:00 | 101 | 0.12d | 0d |
| 104 | 1.2.3.3.2 | Gestión de configuración (líneas de base) | 1h | 2018-11-18 13:00 | 2018-11-18 14:00 | 103 | 0.12d | 0d |
| 105 | 1.2.3.3.3 | Validación de Usuario | 1h | 2018-11-18 14:00 | 2018-11-18 15:00 | 104 | 0.12d | 0d |
| 106 | 1.2.3.3.4 | Aceptación | 1h | 2018-11-18 15:00 | 2018-11-18 16:00 | 105 | 0.12d | 0d |

| ID | WBS | Task | Duration | Start | Finish | Predecessors | Total slack | Free slack |
| --- | --- | --- | --- | --- | --- | --- | --- | --- |
| 107 | 1.2.4 | **Implementación** | 0.25d | 2018-11-18 16:00 | 2018-11-18 18:00 |  | 0.12d |  |
| 108 | 1.2.4.1 | **Iteración 1** | 0.25d | 2018-11-18 16:00 | 2018-11-18 18:00 |  | 0.12d |  |
| 109 | 1.2.4.1.1 | Planificación de Formación | 1h | 2018-11-18 16:00 | 2018-11-18 17:00 | 106 | 0.12d | 0d |
| 110 | 1.2.4.1.2 | Solución en Producción | 1h | 2018-11-18 17:00 | 2018-11-18 18:00 | 109 | 0.12d | 0d |
| 111 | 1.3 | **Cierre** | 0.25d | 2018-11-19 22:00 | 2018-11-20 01:00 |  | 0.12d |  |
| 112 | 1.3.1 | Revisión de Entregables del Proyecto | 1h | 2018-11-19 22:00 | 2018-11-19 23:00 | 110 | 0.12d | 0d |
| 113 | 1.3.2 | Elaboración de Acta de Cierre | 1h | 2018-11-20 00:00 | 2018-11-20 01:00 | 112 | 0.12d |  |
